# VENECAPP

Schedule from MS Project, 2018-05-29 to 2018-12-18, costs in S/., A marks actual dates.

## Calendars

- Standard: Mon-Fri 08:00-12:00, 13:00-17:00; Sat-Sun off. Exceptions (off unless hours are given): 2018-06-29 (San Pedro y San pablo), 2018-07-28 to 2018-07-29 (Fiestas patrias), 2018-10-01 (Dia de todos los santos).

## Resources

| Resource | Group | Unit | Rate | Cost per use |
| --- | --- | --- | --- | --- |
| Gianina Ramirez | Jefe de proyecto |  | 60 |  |
| Gabriel Benavente | Analista de costos |  | 30 |  |
| Alexander Gamarra | Lider usuario |  | 30 |  |
| Edu Moreno | Analista funcional |  | 30 |  |
| Hugo David Peyton | Developer senior |  | 45 |  |
| Paul Bazo | Developer junior |  | 20 |  |
| Jorge Montero | Developer junior |  | 20 |  |
| Nikolas Tesla | Tester |  | 40 |  |
| Manuel Caldas | Capacitador |  | 50 |  |
| Cristian Trigo | Practicante |  | 10 |  |
| Anthony Jhon Soprano | Mafia |  |  | 9000 |
| Computadoras |  | u | 2000 |  |
| Servidor |  | u | 5000 |  |
| Licencias |  | u | 1000 |  |
| Alquiler local laboral |  | u | 2500 |  |
| salonCapacitacion |  |  |  |  |
| articulosFiesta |  |  |  |  |
| articulosDisuasion |  |  |  |  |

## Schedule

| ID | WBS | Task | Type | Duration | Start | Finish | Predecessors | Complete | Remaining | Baseline start | Baseline finish | Baseline duration | Total slack | Resources | Work | Actual work | Cost | Baseline cost | Actual cost |
| --- | --- | --- | --- | --- | --- | --- | --- | --- | --- | --- | --- | --- | --- | --- | --- | --- | --- | --- | --- |
| 1 | 1 | **Venezolanapp** |  | 143.5d | 2018-05-29 A | 2018-12-18 |  | 18% | 118.2d | 2018-05-29 | 2018-12-18 | 143.5d | 0d | Computadoras [9 u]; Servidor [1 u]; Alquiler local laboral [7 u] | 2267.33h | 264.72h | 148,180 | 150,180 | 20,256.59 |
| 2 | 1.1 | **Inicio** |  | 3.5d | 2018-05-29 A | 2018-06-01 A |  | 100% |  | 2018-05-29 | 2018-06-01 | 3.5d |  |  | 32h | 32h | 1,800 | 1,800 | 1,800 |
| 3 | 1.1.1 | Project Charter |  | 2d | 2018-05-29 A | 2018-05-30 A |  | 100% |  | 2018-05-29 | 2018-05-30 | 2d |  | Gianina Ramirez | 16h | 16h | 960 | 960 | 960 |
| 4 | 1.1.2 | Lista de Interesados |  | 0.5d | 2018-05-31 A | 2018-05-31 A | 3 | 100% |  | 2018-05-31 | 2018-05-31 | 0.5d |  | Gianina Ramirez; Edu Moreno | 8h | 8h | 360 | 360 | 360 |
| 5 | 1.1.3 | Project Kickoff |  | 1d | 2018-05-31 A | 2018-06-01 A | 4 | 100% |  | 2018-05-31 | 2018-06-01 | 1d |  | Gianina Ramirez | 8h | 8h | 480 | 480 | 480 |
| 6 | 1.2 | **Panificacion** |  | 7d | 2018-06-01 A | 2018-06-12 A |  | 100% |  | 2018-06-01 | 2018-06-12 | 7d |  |  | 82h | 82h | 3,660 | 3,660 | 3,660 |
| 7 | 1.2.1 | **Alcance** |  | 4d | 2018-06-01 A | 2018-06-07 A |  | 100% |  | 2018-06-01 | 2018-06-07 | 4d |  |  | 56h | 56h | 2,400 | 2,400 | 2,400 |
| 8 | 1.2.1.1 | Requerimientos |  | 1d | 2018-06-01 A | 2018-06-04 A | 5 | 100% |  | 2018-06-01 | 2018-06-04 | 1d |  | Alexander Gamarra; Edu Moreno | 16h | 16h | 480 | 480 | 480 |
| 9 | 1.2.1.2 | Project Scoope Statement |  | 2d | 2018-06-04 A | 2018-06-06 A | 8 | 100% |  | 2018-06-04 | 2018-06-06 | 2d |  | Edu Moreno; Gianina Ramirez | 32h | 32h | 1,440 | 1,440 | 1,440 |
| 10 | 1.2.1.3 | WBS |  | 1d | 2018-06-06 A | 2018-06-07 A | 9 | 100% |  | 2018-06-06 | 2018-06-07 | 1d |  | Gianina Ramirez | 8h | 8h | 480 | 480 | 480 |
| 11 | 1.2.2 | **Tiempo** |  | 1d | 2018-06-07 A | 2018-06-08 A |  | 100% |  | 2018-06-07 | 2018-06-08 | 1d |  |  | 8h | 8h | 480 | 480 | 480 |
| 12 | 1.2.2.1 | Cronograma |  | 1d | 2018-06-07 A | 2018-06-08 A | 10 | 100% |  | 2018-06-07 | 2018-06-08 | 1d |  | Gianina Ramirez | 8h | 8h | 480 | 480 | 480 |
| 13 | 1.2.3 | **Costo** |  | 1d | 2018-06-08 A | 2018-06-11 A |  | 100% |  | 2018-06-08 | 2018-06-11 | 1d |  |  | 8h | 8h | 240 | 240 | 240 |
| 14 | 1.2.3.1 | Presupuesto |  | 1d | 2018-06-08 A | 2018-06-11 A | 12 | 100% |  | 2018-06-08 | 2018-06-11 | 1d |  | Gabriel Benavente | 8h | 8h | 240 | 240 | 240 |
| 15 | 1.2.4 | **Riesgos** |  | 1d | 2018-06-11 A | 2018-06-12 A |  | 100% |  | 2018-06-11 | 2018-06-12 | 1d |  |  | 10h | 10h | 540 | 540 | 540 |
| 16 | 1.2.4.1 | RBS |  | 1d | 2018-06-11 A | 2018-06-12 A | 14 | 100% |  | 2018-06-11 | 2018-06-12 | 1d |  | Gabriel Benavente [25%]; Gianina Ramirez | 10h | 10h | 540 | 540 | 540 |
| 17 | 1.2.5 | Reunion por fin de planificacion (Parrilla con sus tragos) | milestone | 0d | 2018-06-12 A | 2018-06-12 A | 16 | 100% |  | 2018-06-12 | 2018-06-12 |  |  | Alexander Gamarra; Edu Moreno; Gabriel Benavente; Gianina Ramirez |  |  |  |  |  |
| 18 | 1.2.6 | Fin de Planificacion | milestone | 0d | 2018-06-12 A | 2018-06-12 A | 17 | 100% |  | 2018-06-12 | 2018-06-12 |  |  |  |  |  |  |  |  |
| 19 | 1.3 | **Ejecucion** |  | 131d | 2018-06-12 A | 2018-12-14 |  | 13% | 114.54d | 2018-06-12 | 2018-12-14 | 131d | 2d |  | 2009.33h | 150.72h | 97,660 | 99,660 | 7,656 |
| 20 | 1.3.1 | **Pre Produccion** |  | 8d | 2018-06-12 A | 2018-06-22 A |  | 100% |  | 2018-06-12 | 2018-06-22 | 8d |  |  | 60h | 60h | 3,120 | 3,120 | 3,120 |
| 21 | 1.3.1.1 | Conseguir el equipo y recursos |  | 3d | 2018-06-12 A | 2018-06-15 A | 18 | 100% |  | 2018-06-12 | 2018-06-15 | 3d |  | Gianina Ramirez; Gabriel Benavente [25%] | 30h | 30h | 1,620 | 1,620 | 1,620 |
| 22 | 1.3.1.2 | Conseguir licencias |  | 2d | 2018-06-12 A | 2018-06-14 A | 16 | 100% |  | 2018-06-12 | 2018-06-14 | 2d |  | Gabriel Benavente [25%] | 4h | 4h | 120 | 120 | 120 |
| 23 | 1.3.1.3 | Conseguir Hardware |  | 3d | 2018-06-12 A | 2018-06-15 A | 16 | 100% |  | 2018-06-12 | 2018-06-15 | 3d |  | Gabriel Benavente [25%] | 6h | 6h | 180 | 180 | 180 |
| 24 | 1.3.1.4 | Capacitar recursos |  | 5d | 2018-06-15 A | 2018-06-22 A | 21 | 100% |  | 2018-06-15 | 2018-06-22 | 5d |  | Gianina Ramirez [50%] | 20h | 20h | 1,200 | 1,200 | 1,200 |
| 25 | 1.3.1.5 | Visitar Superintendencia nacional de migraciones | milestone | 0d | 2018-06-15 A | 2018-06-15 A | 21FF | 100% |  | 2018-06-15 | 2018-06-15 |  |  | Alexander Gamarra; Cristian Trigo; Edu Moreno; Gabriel Benavente; Gianina Ramirez; Hugo David Peyton; Jorge Montero; Nikolas Tesla; Paul Bazo |  |  |  |  |  |

| ID | WBS | Task | Duration | Start | Finish | Predecessors | Complete | Remaining | Baseline start | Baseline finish | Baseline duration | Total slack | Free slack | Resources | Work | Actual work | Cost | Baseline cost | Actual cost |
| --- | --- | --- | --- | --- | --- | --- | --- | --- | --- | --- | --- | --- | --- | --- | --- | --- | --- | --- | --- |
| 26 | 1.3.2 | **Analisis y diseño** | 17d | 2018-06-15 A | 2018-07-11 |  | 44% | 9.44d | 2018-06-15 | 2018-07-11 | 17d | 0d |  |  | 184h | 90.72h | 8,400 | 8,400 | 4,536 |
| 27 | 1.3.2.1 | Arquitectura de Software | 12d | 2018-06-15 A | 2018-07-04 | 25 | 63% | 4.44d | 2018-06-15 | 2018-07-04 | 12d | 0d |  | Gianina Ramirez [50%]; Hugo David Peyton | 144h | 90.72h | 7,200 | 7,200 | 4,536 |
| 28 | 1.3.2.2 | Diseño preliminar | 5d | 2018-07-04 | 2018-07-11 | 27 |  |  | 2018-07-04 | 2018-07-11 | 5d | 0d |  | Edu Moreno | 40h |  | 1,200 | 1,200 |  |
| 29 | 1.3.3 | **Sprint 1** | 21d | 2018-07-11 | 2018-08-09 |  |  |  | 2018-07-11 | 2018-08-09 | 21d | 0d |  |  | 288h |  | 9,440 | 9,440 |  |
| 30 | 1.3.3.1 | **Analisis y Diseño** | 2d | 2018-07-11 | 2018-07-13 |  |  |  | 2018-07-11 | 2018-07-13 | 2d | 0d |  |  | 24h |  | 720 | 720 |  |
| 31 | 1.3.3.1.1 | Sprint backlog | 1d | 2018-07-11 | 2018-07-12 | 28 |  |  | 2018-07-11 | 2018-07-12 | 1d | 0d |  | Edu Moreno; Alexander Gamarra | 16h |  | 480 | 480 |  |
| 32 | 1.3.3.1.2 | Mockups | 1d | 2018-07-12 | 2018-07-13 | 31 |  |  | 2018-07-12 | 2018-07-13 | 1d | 0d |  | Alexander Gamarra | 8h |  | 240 | 240 |  |
| 33 | 1.3.3.2 | **Desarrollo Web** | 7d | 2018-07-13 | 2018-07-24 |  |  |  | 2018-07-13 | 2018-07-24 | 7d | 1d |  |  | 88h |  | 1,840 | 1,840 |  |
| 34 | 1.3.3.2.1 | **Desarrollo Front End** | 6d | 2018-07-16 | 2018-07-24 |  |  |  | 2018-07-16 | 2018-07-24 | 6d | 0d |  |  | 48h |  | 920 | 920 |  |
| 35 | 1.3.3.2.1.1 | US001 Vista de Registro | 1d | 2018-07-16 | 2018-07-17 | 32FS+1d |  |  | 2018-07-16 | 2018-07-17 | 1d | 0d |  | Hugo David Peyton | 8h |  | 360 | 360 |  |
| 36 | 1.3.3.2.1.2 | US002 Vista de Login | 1d | 2018-07-17 | 2018-07-18 | 35 |  |  | 2018-07-17 | 2018-07-18 | 1d | 0d |  | Paul Bazo | 8h |  | 160 | 160 |  |
| 37 | 1.3.3.2.1.3 | US003 Vista de Configuración de perfil | 2d | 2018-07-18 | 2018-07-20 | 36 |  |  | 2018-07-18 | 2018-07-20 | 2d | 0d |  | Cristian Trigo | 16h |  | 160 | 160 |  |
| 38 | 1.3.3.2.1.4 | US004 Vista de detalle trámites | 1d | 2018-07-20 | 2018-07-23 | 37 |  |  | 2018-07-20 | 2018-07-23 | 1d | 0d |  | Jorge Montero | 8h |  | 160 | 160 |  |
| 39 | 1.3.3.2.1.5 | Vista de Trámites disponibles | 1d | 2018-07-23 | 2018-07-24 | 38 |  |  | 2018-07-23 | 2018-07-24 | 1d | 104d |  | Cristian Trigo | 8h |  | 80 | 80 |  |
| 40 | 1.3.3.2.2 | **Desarrollo Back End** | 5d | 2018-07-13 | 2018-07-20 |  |  |  | 2018-07-13 | 2018-07-20 | 5d | 106d |  |  | 40h |  | 920 | 920 |  |
| 41 | 1.3.3.2.2.1 | US001 Registro de usuarios | 1d | 2018-07-13 | 2018-07-16 | 32 |  |  | 2018-07-13 | 2018-07-16 | 1d | 106d | 0d | Jorge Montero | 8h |  | 160 | 160 |  |
| 42 | 1.3.3.2.2.2 | US002 Inicio de Sesión | 1d | 2018-07-16 | 2018-07-17 | 41 |  |  | 2018-07-16 | 2018-07-17 | 1d | 106d | 0d | Hugo David Peyton | 8h |  | 360 | 360 |  |
| 43 | 1.3.3.2.2.3 | US003 Configuración de perfil | 1d | 2018-07-17 | 2018-07-18 | 42 |  |  | 2018-07-17 | 2018-07-18 | 1d | 106d | 0d | Cristian Trigo | 8h |  | 80 | 80 |  |
| 44 | 1.3.3.2.2.4 | US004 Visualizar información de trámites | 1d | 2018-07-18 | 2018-07-19 | 43 |  |  | 2018-07-18 | 2018-07-19 | 1d | 106d | 0d | Paul Bazo | 8h |  | 160 | 160 |  |
| 45 | 1.3.3.2.2.5 | US005 Consulta de Trámites | 1d | 2018-07-19 | 2018-07-20 | 44 |  |  | 2018-07-19 | 2018-07-20 | 1d | 106d |  | Jorge Montero | 8h |  | 160 | 160 |  |
| 46 | 1.3.3.3 | **Pruebas** | 11d | 2018-07-23 | 2018-08-07 |  |  |  | 2018-07-23 | 2018-08-07 | 11d | 0d |  |  | 96h |  | 4,000 | 4,000 |  |
| 47 | 1.3.3.3.1 | Unitarias | 6d | 2018-07-23 | 2018-07-31 | 38 |  |  | 2018-07-23 | 2018-07-31 | 6d | 0d |  | Hugo David Peyton | 48h |  | 2,160 | 2,160 |  |
| 48 | 1.3.3.3.2 | Integración | 2d | 2018-07-31 | 2018-08-02 | 47 |  |  | 2018-07-31 | 2018-08-02 | 2d | 0d |  | Nikolas Tesla | 16h |  | 640 | 640 |  |
| 49 | 1.3.3.3.3 | Cobertura | 2d | 2018-08-02 | 2018-08-06 | 48 |  |  | 2018-08-02 | 2018-08-06 | 2d | 0d |  | Nikolas Tesla | 16h |  | 640 | 640 |  |
| 50 | 1.3.3.3.4 | Pruebas de aceptacion | 1d | 2018-08-06 | 2018-08-07 | 49 |  |  | 2018-08-06 | 2018-08-07 | 1d | 0d |  | Nikolas Tesla; Alexander Gamarra | 16h |  | 560 | 560 |  |

| ID | WBS | Task | Type | Duration | Start | Finish | Predecessors | Baseline start | Baseline finish | Baseline duration | Total slack | Free slack | Resources | Work | Cost | Baseline cost |
| --- | --- | --- | --- | --- | --- | --- | --- | --- | --- | --- | --- | --- | --- | --- | --- | --- |
| 51 | 1.3.3.4 | **Despliegue** |  | 1d | 2018-08-07 | 2018-08-08 |  | 2018-08-07 | 2018-08-08 | 1d | 0d |  |  | 16h | 840 | 840 |
| 52 | 1.3.3.4.1 | Despliegue en Azure |  | 1d | 2018-08-07 | 2018-08-08 | 50 | 2018-08-07 | 2018-08-08 | 1d | 0d |  | Gianina Ramirez; Hugo David Peyton | 16h | 840 | 840 |
| 53 | 1.3.3.5 | Feedback del Sprint |  | 1d | 2018-08-08 | 2018-08-09 | 52 | 2018-08-08 | 2018-08-09 | 1d | 0d |  | Alexander Gamarra; Cristian Trigo; Edu Moreno; Gianina Ramirez; Hugo David Peyton; Jorge Montero; Nikolas Tesla; Paul Bazo | 64h | 2,040 | 2,040 |
| 54 | 1.3.4 | **Sprint 2** |  | 20d | 2018-08-09 | 2018-09-06 |  | 2018-08-09 | 2018-09-06 | 20d | 0d |  |  | 293.33h | 24,180 | 24,180 |
| 55 | 1.3.4.1 | **Analisis y Diseño** |  | 2d | 2018-08-09 | 2018-08-13 |  | 2018-08-09 | 2018-08-13 | 2d | 0d |  |  | 24h | 720 | 720 |
| 56 | 1.3.4.1.1 | Sprint backlog |  | 1d | 2018-08-09 | 2018-08-10 | 53 | 2018-08-09 | 2018-08-10 | 1d | 0d |  | Edu Moreno; Alexander Gamarra | 16h | 480 | 480 |
| 57 | 1.3.4.1.2 | Mockups |  | 1d | 2018-08-10 | 2018-08-13 | 56 | 2018-08-10 | 2018-08-13 | 1d | 0d |  | Edu Moreno | 8h | 240 | 240 |
| 58 | 1.3.4.2 | **Desarrollo Web** |  | 6d | 2018-08-13 | 2018-08-21 |  | 2018-08-13 | 2018-08-21 | 6d | 1d |  |  | 109.33h | 16,580 | 16,580 |
| 59 | 1.3.4.2.1 | **Desarrollo Front End** |  | 5d | 2018-08-14 | 2018-08-21 |  | 2018-08-14 | 2018-08-21 | 5d | 0d |  |  | 68h | 15,560 | 15,560 |
| 60 | 1.3.4.2.1.1 | US006 Notificaciones |  | 1d | 2018-08-14 | 2018-08-15 | 57FS+1d | 2018-08-14 | 2018-08-15 | 1d | 0d |  | Hugo David Peyton | 8h | 360 | 360 |
| 61 | 1.3.4.2.1.2 | US007 Vista de Cite en línea |  | 1d | 2018-08-15 | 2018-08-16 | 60 | 2018-08-15 | 2018-08-16 | 1d | 0d |  | Cristian Trigo [50%]; Jorge Montero | 12h | 200 | 200 |
| 62 | 1.3.4.2.1.3 | Problemas con opositores - Contratar a Tony Soprano | milestone | 0d | 2018-08-16 | 2018-08-16 | 61 | 2018-08-16 | 2018-08-16 | 0d | 0d |  | Anthony Jhon Soprano; articulosDisuasion |  | 14,000 | 14,000 |
| 63 | 1.3.4.2.1.3 | Vista de Formatos Disponibles |  | 1d | 2018-08-16 | 2018-08-17 | 62 | 2018-08-16 | 2018-08-17 | 1d | 0d |  | Paul Bazo; Hugo David Peyton | 16h | 520 | 520 |
| 64 | 1.3.4.2.1.4 | Vista: Crud de la entidad documentos |  | 2d | 2018-08-17 | 2018-08-21 | 63 | 2018-08-17 | 2018-08-21 | 2d | 0d |  | Jorge Montero; Cristian Trigo | 32h | 480 | 480 |
| 65 | 1.3.4.2.2 | **Desarrollo Back End** |  | 3.67d | 2018-08-13 | 2018-08-17 |  | 2018-08-13 | 2018-08-17 | 3.67d | 86.33d |  |  | 41.33h | 1,020 | 1,020 |
| 66 | 1.3.4.2.2.1 | US006 Notificaciones |  | 1d | 2018-08-13 | 2018-08-14 | 57 | 2018-08-13 | 2018-08-14 | 1d | 86.33d | 0d | Cristian Trigo; Paul Bazo | 16h | 240 | 240 |
| 67 | 1.3.4.2.2.2 | US007 Agendar cita |  | 1d | 2018-08-14 | 2018-08-15 | 66 | 2018-08-14 | 2018-08-15 | 1d | 86.33d | 0d | Hugo David Peyton; Jorge Montero [50%] | 12h | 440 | 440 |
| 68 | 1.3.4.2.2.3 | Descarga de formatos |  | 0.67d | 2018-08-15 | 2018-08-16 | 67 | 2018-08-15 | 2018-08-16 | 0.67d | 86.33d | 0d | Cristian Trigo [50%]; Jorge Montero [50%] | 5.33h | 80 | 80 |
| 69 | 1.3.4.2.2.4 | Actualización de los documentos |  | 1d | 2018-08-16 | 2018-08-17 | 68 | 2018-08-16 | 2018-08-17 | 1d | 86.33d |  | Hugo David Peyton [50%]; Paul Bazo [50%] | 8h | 260 | 260 |
| 70 | 1.3.4.3 | **Pruebas** |  | 10d | 2018-08-21 | 2018-09-04 |  | 2018-08-21 | 2018-09-04 | 10d | 0d |  |  | 88h | 3,600 | 3,600 |
| 71 | 1.3.4.3.1 | Unitarias |  | 4d | 2018-08-21 | 2018-08-27 | 64 | 2018-08-21 | 2018-08-27 | 4d | 0d |  | Hugo David Peyton | 32h | 1,440 | 1,440 |
| 72 | 1.3.4.3.2 | Integración |  | 3d | 2018-08-27 | 2018-08-30 | 71 | 2018-08-27 | 2018-08-30 | 3d | 0d |  | Nikolas Tesla | 24h | 960 | 960 |
| 73 | 1.3.4.3.3 | Cobertura |  | 2d | 2018-08-30 | 2018-09-03 | 72 | 2018-08-30 | 2018-09-03 | 2d | 0d |  | Nikolas Tesla | 16h | 640 | 640 |
| 74 | 1.3.4.3.4 | Pruebas de aceptacion |  | 1d | 2018-09-03 | 2018-09-04 | 73 | 2018-09-03 | 2018-09-04 | 1d | 0d |  | Nikolas Tesla; Alexander Gamarra | 16h | 560 | 560 |

| ID | WBS | Task | Type | Duration | Start | Finish | Predecessors | Baseline start | Baseline finish | Baseline duration | Total slack | Free slack | Resources | Work | Cost | Baseline cost |
| --- | --- | --- | --- | --- | --- | --- | --- | --- | --- | --- | --- | --- | --- | --- | --- | --- |
| 75 | 1.3.4.4 | **Despliegue** |  | 1d | 2018-09-04 | 2018-09-05 |  | 2018-09-04 | 2018-09-05 | 1d | 0d |  |  | 8h | 240 | 240 |
| 76 | 1.3.4.4.1 | Despliegue en Azure |  | 1d | 2018-09-04 | 2018-09-05 | 74 | 2018-09-04 | 2018-09-05 | 1d | 0d |  | Alexander Gamarra | 8h | 240 | 240 |
| 77 | 1.3.4.5 | Feedback del Sprint |  | 1d | 2018-09-05 | 2018-09-06 | 76 | 2018-09-05 | 2018-09-06 | 1d | 0d |  | Alexander Gamarra; Cristian Trigo; Edu Moreno; Gianina Ramirez; Hugo David Peyton; Jorge Montero; Nikolas Tesla; Paul Bazo | 64h | 2,040 | 2,040 |
| 78 | 1.3.4.6 | Reunion por mitad de desarrollo (Fiesta con amanecida y confraternidad laboral) | milestone | 0d | 2018-09-06 | 2018-09-06 | 77 | 2018-09-06 | 2018-09-06 |  | 0d |  | Alexander Gamarra; Cristian Trigo; Edu Moreno; Gabriel Benavente; Gianina Ramirez; Hugo David Peyton; Jorge Montero; Nikolas Tesla; Paul Bazo; articulosFiesta |  | 1,000 | 1,000 |
| 79 | 1.3.5 | **Sprint 3** |  | 20d | 2018-09-06 | 2018-10-05 |  | 2018-09-06 | 2018-10-10 | 23d | 0d |  |  | 360h | 21,020 | 23,020 |
| 80 | 1.3.5.1 | **Analisis y Diseño** |  | 2d | 2018-09-06 | 2018-09-10 |  | 2018-09-06 | 2018-09-10 | 2d | 0d |  |  | 24h | 720 | 720 |
| 81 | 1.3.5.1.1 | Sprint backlog |  | 1d | 2018-09-06 | 2018-09-07 | 78 | 2018-09-06 | 2018-09-07 | 1d | 0d |  | Edu Moreno; Alexander Gamarra | 16h | 480 | 480 |
| 82 | 1.3.5.1.2 | Mockups |  | 1d | 2018-09-07 | 2018-09-10 | 81 | 2018-09-07 | 2018-09-10 | 1d | 0d |  | Edu Moreno | 8h | 240 | 240 |
| 83 | 1.3.5.2 | **Desarrollo IOS** |  | 16d | 2018-09-10 | 2018-10-03 |  | 2018-09-10 | 2018-10-10 | 21d | 0d |  |  | 184h | 4,740 | 6,740 |
| 84 | 1.3.5.2.1 | **Desarrollo Front End** |  | 16d | 2018-09-10 | 2018-10-03 |  | 2018-09-10 | 2018-10-10 | 21d | 0d |  |  | 184h | 4,740 | 6,740 |
| 85 | 1.3.5.2.1.1 | US001 Vista de Registro |  | 1d | 2018-09-10 | 2018-09-11 | 82 | 2018-09-10 | 2018-09-11 | 1d | 0d |  | Cristian Trigo | 8h | 80 | 80 |
| 86 | 1.3.5.2.1.2 | Capacitacion por Caldas |  | 5d | 2018-09-11 | 2018-09-18 | 85 | 2018-09-11 | 2018-09-25 | 10d | 54d | 0d | Manuel Caldas; salonCapacitacion [0.1%] | 40h | 2,500 | 4,500 |
| 87 | 1.3.5.2.1.2 | US002 Vista de Login |  | 1d | 2018-09-18 | 2018-09-19 | 86 | 2018-09-25 | 2018-09-26 | 1d | 54d | 0d | Cristian Trigo | 8h | 80 | 80 |
| 88 | 1.3.5.2.1.3 | US003 Vista de Configuración de perfil |  | 2d | 2018-09-19 | 2018-09-21 | 87 | 2018-09-26 | 2018-09-28 | 2d | 54d | 0d | Paul Bazo; Cristian Trigo | 32h | 480 | 480 |
| 89 | 1.3.5.2.1.4 | US004 Vista de detalle trámites |  | 2d | 2018-09-21 | 2018-09-25 | 88 | 2018-09-28 | 2018-10-03 | 2d | 54d | 0d | Jorge Montero; Paul Bazo | 32h | 640 | 640 |
| 90 | 1.3.5.2.1.5 | Vista de Trámites disponibles |  | 1d | 2018-09-25 | 2018-09-26 | 89 | 2018-10-03 | 2018-10-04 | 1d | 54d | 0d | Paul Bazo; Cristian Trigo | 16h | 240 | 240 |
| 91 | 1.3.5.2.1.6 | US006 Notificaciones |  | 1d | 2018-09-26 | 2018-09-27 | 90 | 2018-10-04 | 2018-10-05 | 1d | 54d | 0d | Jorge Montero; Cristian Trigo | 16h | 240 | 240 |
| 92 | 1.3.5.2.1.7 | US007 Vista de Cite en línea |  | 1d | 2018-09-27 | 2018-09-28 | 91 | 2018-10-05 | 2018-10-08 | 1d | 54d | 0d | Paul Bazo; Cristian Trigo | 16h | 240 | 240 |
| 93 | 1.3.5.2.1.8 | Vista de Formatos Disponibles |  | 1d | 2018-09-28 | 2018-10-02 | 92 | 2018-10-08 | 2018-10-09 | 1d | 54d | 0d | Jorge Montero [50%]; Cristian Trigo [50%] | 8h | 120 | 120 |
| 94 | 1.3.5.2.1.9 | Vista: Crud de la entidad documentos |  | 1d | 2018-10-02 | 2018-10-03 | 93 | 2018-10-09 | 2018-10-10 | 1d | 54d |  | Cristian Trigo [50%]; Paul Bazo [50%] | 8h | 120 | 120 |
| 95 | 1.3.5.3 | **Pruebas** |  | 16d | 2018-09-11 | 2018-10-04 |  | 2018-09-11 | 2018-10-04 | 16d | 0d |  |  | 136h | 14,720 | 14,720 |
| 96 | 1.3.5.3.1 | Unitarias |  | 9d | 2018-09-11 | 2018-09-24 | 85 | 2018-09-11 | 2018-09-24 | 9d | 0d |  | Hugo David Peyton | 72h | 3,240 | 3,240 |
| 97 | 1.3.5.3.2 | Integración |  | 3d | 2018-09-24 | 2018-09-27 | 96 | 2018-09-24 | 2018-09-27 | 3d | 0d |  | Nikolas Tesla | 24h | 960 | 960 |
| 98 | 1.3.5.3.3 | Cobertura |  | 2d | 2018-09-27 | 2018-10-02 | 97 | 2018-09-27 | 2018-10-02 | 2d | 0d |  | Nikolas Tesla | 16h | 640 | 640 |
| 99 | 1.3.5.3.4 | Solucion a los opositores | milestone | 0d | 2018-10-02 | 2018-10-02 | 98 | 2018-10-02 | 2018-10-02 | 0d | 0d |  | Anthony Jhon Soprano |  | 9,000 | 9,000 |
| 100 | 1.3.5.3.4 | Pruebas de aceptacion |  | 1d | 2018-10-02 | 2018-10-03 | 99 | 2018-10-02 | 2018-10-03 | 1d | 0d |  | Nikolas Tesla; Alexander Gamarra | 16h | 560 | 560 |
| 101 | 1.3.5.3.6 | Pruebas de sistema |  | 1d | 2018-10-03 | 2018-10-04 | 100 | 2018-10-03 | 2018-10-04 | 1d | 0d |  | Nikolas Tesla | 8h | 320 | 320 |

| ID | WBS | Task | Type | Duration | Start | Finish | Predecessors | Baseline start | Baseline finish | Baseline duration | Total slack | Resources | Work | Cost | Baseline cost |
| --- | --- | --- | --- | --- | --- | --- | --- | --- | --- | --- | --- | --- | --- | --- | --- |
| 102 | 1.3.5.4 | **Despliegue** |  | 1d | 2018-10-04 | 2018-10-05 |  | 2018-10-04 | 2018-10-05 | 1d | 0d |  | 16h | 840 | 840 |
| 103 | 1.3.5.4.1 | Publicacion en App Stores |  | 1d | 2018-10-04 | 2018-10-05 | 101 | 2018-10-04 | 2018-10-05 | 1d | 0d | Hugo David Peyton; Gianina Ramirez | 16h | 840 | 840 |
| 104 | 1.3.5.5 | Feedback del Sprint | milestone | 0d | 2018-10-05 | 2018-10-05 | 103 | 2018-10-05 | 2018-10-05 |  | 0d | Alexander Gamarra; Cristian Trigo; Edu Moreno; Gianina Ramirez; Hugo David Peyton; Jorge Montero; Nikolas Tesla; Paul Bazo |  |  |  |
| 105 | 1.3.6 | **Sprint 4** |  | 35d | 2018-10-05 | 2018-11-23 |  | 2018-10-05 | 2018-11-23 | 35d | 0d |  | 464h | 14,100 | 14,100 |
| 106 | 1.3.6.1 | **Analisis y Diseño** |  | 2d | 2018-10-05 | 2018-10-09 |  | 2018-10-05 | 2018-10-09 | 2d | 0d |  | 24h | 720 | 720 |
| 107 | 1.3.6.1.1 | Sprint backlog |  | 1d | 2018-10-05 | 2018-10-08 | 104 | 2018-10-05 | 2018-10-08 | 1d | 0d | Edu Moreno; Alexander Gamarra | 16h | 480 | 480 |
| 108 | 1.3.6.1.2 | Mockups |  | 1d | 2018-10-08 | 2018-10-09 | 107 | 2018-10-08 | 2018-10-09 | 1d | 0d | Edu Moreno | 8h | 240 | 240 |
| 109 | 1.3.6.2 | **Desarrollo** |  | 15d | 2018-10-09 | 2018-10-30 |  | 2018-10-09 | 2018-10-30 | 15d | 0d |  | 232h | 3,760 | 3,760 |
| 110 | 1.3.6.2.1 | **Desarrollo Android** |  | 15d | 2018-10-09 | 2018-10-30 |  | 2018-10-09 | 2018-10-30 | 15d | 0d |  | 232h | 3,760 | 3,760 |
| 111 | 1.3.6.2.1.1 | **Desarrollo Front End** |  | 15d | 2018-10-09 | 2018-10-30 |  | 2018-10-09 | 2018-10-30 | 15d | 0d |  | 232h | 3,760 | 3,760 |
| 112 | 1.3.6.2.1.1.1 | US001 Vista de Registro |  | 1d | 2018-10-09 | 2018-10-10 | 108 | 2018-10-09 | 2018-10-10 | 1d | 0d | Cristian Trigo; Paul Bazo | 16h | 240 | 240 |
| 113 | 1.3.6.2.1.1.2 | US002 Vista de Login |  | 1d | 2018-10-10 | 2018-10-11 | 112 | 2018-10-10 | 2018-10-11 | 1d | 0d | Paul Bazo [50%]; Jorge Montero [50%] | 8h | 160 | 160 |
| 114 | 1.3.6.2.1.1.3 | US003 Vista de Configuración de perfil |  | 2d | 2018-10-11 | 2018-10-15 | 113 | 2018-10-11 | 2018-10-15 | 2d | 0d | Jorge Montero; Cristian Trigo | 32h | 480 | 480 |
| 115 | 1.3.6.2.1.1.4 | US004 Vista de detalle trámites |  | 2d | 2018-10-15 | 2018-10-17 | 114 | 2018-10-15 | 2018-10-17 | 2d | 0d | Cristian Trigo; Paul Bazo | 32h | 480 | 480 |
| 116 | 1.3.6.2.1.1.5 | Vista de Trámites disponibles |  | 1d | 2018-10-17 | 2018-10-18 | 115 | 2018-10-17 | 2018-10-18 | 1d | 0d | Paul Bazo; Jorge Montero | 16h | 320 | 320 |
| 117 | 1.3.6.2.1.1.6 | US006 Notificaciones |  | 2d | 2018-10-18 | 2018-10-22 | 116 | 2018-10-18 | 2018-10-22 | 2d | 0d | Jorge Montero; Cristian Trigo | 32h | 480 | 480 |
| 118 | 1.3.6.2.1.1.7 | US007 Vista de Cite en línea |  | 1d | 2018-10-22 | 2018-10-23 | 117 | 2018-10-22 | 2018-10-23 | 1d | 0d | Cristian Trigo; Paul Bazo | 16h | 240 | 240 |
| 119 | 1.3.6.2.1.1.8 | Vista de Formatos Disponibles |  | 2d | 2018-10-23 | 2018-10-25 | 118 | 2018-10-23 | 2018-10-25 | 2d | 0d | Paul Bazo; Jorge Montero | 32h | 640 | 640 |
| 120 | 1.3.6.2.1.1.9 | Vista: Crud de la entidad documentos |  | 3d | 2018-10-25 | 2018-10-30 | 119 | 2018-10-25 | 2018-10-30 | 3d | 0d | Jorge Montero; Cristian Trigo | 48h | 720 | 720 |
| 121 | 1.3.6.3 | **Pruebas** |  | 16d | 2018-10-30 | 2018-11-21 |  | 2018-10-30 | 2018-11-21 | 16d | 0d |  | 136h | 5,720 | 5,720 |
| 122 | 1.3.6.3.1 | Unitarias |  | 9d | 2018-10-30 | 2018-11-12 | 120 | 2018-10-30 | 2018-11-12 | 9d | 0d | Hugo David Peyton | 72h | 3,240 | 3,240 |
| 123 | 1.3.6.3.2 | Integración |  | 3d | 2018-11-12 | 2018-11-15 | 122 | 2018-11-12 | 2018-11-15 | 3d | 0d | Nikolas Tesla | 24h | 960 | 960 |
| 124 | 1.3.6.3.3 | Cobertura |  | 2d | 2018-11-15 | 2018-11-19 | 123 | 2018-11-15 | 2018-11-19 | 2d | 0d | Nikolas Tesla | 16h | 640 | 640 |
| 125 | 1.3.6.3.4 | Pruebas de sistema |  | 1d | 2018-11-19 | 2018-11-20 | 124 | 2018-11-19 | 2018-11-20 | 1d | 0d | Nikolas Tesla | 8h | 320 | 320 |
| 126 | 1.3.6.3.4 | Pruebas de aceptacion |  | 1d | 2018-11-20 | 2018-11-21 | 125 | 2018-11-20 | 2018-11-21 | 1d | 0d | Nikolas Tesla; Alexander Gamarra | 16h | 560 | 560 |

| ID | WBS | Task | Type | Duration | Start | Finish | Predecessors | Baseline start | Baseline finish | Baseline duration | Total slack | Resources | Work | Cost | Baseline cost |
| --- | --- | --- | --- | --- | --- | --- | --- | --- | --- | --- | --- | --- | --- | --- | --- |
| 127 | 1.3.6.4 | **Despliegue** |  | 1d | 2018-11-21 | 2018-11-22 |  | 2018-11-21 | 2018-11-22 | 1d | 0d |  | 8h | 360 | 360 |
| 128 | 1.3.6.4.1 | Publicacion en Play Store |  | 1d | 2018-11-21 | 2018-11-22 | 126 | 2018-11-21 | 2018-11-22 | 1d | 0d | Hugo David Peyton | 8h | 360 | 360 |
| 129 | 1.3.6.5 | Feedback del Sprint |  | 1d | 2018-11-22 | 2018-11-23 | 128 | 2018-11-22 | 2018-11-23 | 1d | 0d | Alexander Gamarra; Cristian Trigo; Edu Moreno; Gianina Ramirez; Hugo David Peyton; Jorge Montero; Nikolas Tesla; Paul Bazo | 64h | 2,040 | 2,040 |
| 130 | 1.3.6.6 | Fiesta por el fin del desarrollo (Alta confraternidad laboral y excesos) | milestone | 0d | 2018-11-23 | 2018-11-23 | 129 | 2018-11-23 | 2018-11-23 |  | 0d | Alexander Gamarra; Cristian Trigo; Edu Moreno; Gabriel Benavente; Gianina Ramirez; Hugo David Peyton; Jorge Montero; Manuel Caldas; Nikolas Tesla; articulosFiesta |  | 1,500 | 1,500 |
| 131 | 1.3.6.7 | Fin de Ejecucion | milestone | 0d | 2018-11-23 | 2018-11-23 | 130 | 2018-11-23 | 2018-11-23 |  | 0d |  |  |  |  |
| 132 | 1.3.7 | **Post Producción** |  | 15d | 2018-11-23 | 2018-12-14 |  | 2018-11-23 | 2018-12-14 | 15d | 0d |  | 360h | 17,400 | 17,400 |
| 133 | 1.3.7.2 | Soporte post Producción |  | 15d | 2018-11-23 | 2018-12-14 | 131 | 2018-11-23 | 2018-12-14 | 15d | 0d | Gianina Ramirez; Hugo David Peyton; Nikolas Tesla | 360h | 17,400 | 17,400 |
| 134 | 1.4 | **Cierre** |  | 2d | 2018-12-14 | 2018-12-18 |  | 2018-12-14 | 2018-12-18 | 2d | 0d |  | 144h | 4,560 | 4,560 |
| 135 | 1.4.1 | Lecciones aprendidas |  | 2d | 2018-12-14 | 2018-12-18 | 133 | 2018-12-14 | 2018-12-18 | 2d | 0d | Alexander Gamarra; Cristian Trigo; Edu Moreno; Gabriel Benavente; Gianina Ramirez; Hugo David Peyton; Jorge Montero; Nikolas Tesla; Paul Bazo | 144h | 4,560 | 4,560 |
| 136 | 1.4.2 | Fin del proyecto | milestone | 0d | 2018-12-18 | 2018-12-18 | 135 | 2018-12-18 | 2018-12-18 |  | 0d |  |  |  |  |
